# Forcier_Gunnar10.5

Schedule from MS Project, 2022-09-23 to 2023-04-05, status date 2023-02-02, costs in $, A marks actual dates.
Sabian Technologies

## Calendars

- Standard: Mon-Fri 08:00-12:00, 13:00-17:00; Sat-Sun off. Exceptions (off unless hours are given): 2022-11-24 to 2022-11-25 (Thanksgiving Holiday).

## Resources

| Resource | Rate | Cost per use |
| --- | --- | --- |
| Mingyu Zhùróng | 95 |  |
| Lukas Schmidt | 140 |  |
| Zihao Nángong | 95 |  |
| Darren Lobendahn | 77 |  |
| Yoshito Mizugame | 123 |  |
| Period 1 Training Costs |  |  |
| Period 1 Managerial Action Costs |  |  |
| Period 1 Unallocated Resource Costs |  | 1037 |
| Fujimaro Fujii | 93 |  |
| Ralph Blasingame | 78 |  |
| Period 2 Training Costs |  |  |
| Period 2 Managerial Action Costs |  |  |
| Period 2 Unallocated Resource Costs |  | 5120 |
| Period 3 Training Costs |  |  |
| Period 3 Managerial Action Costs |  |  |
| Period 3 Unallocated Resource Costs |  | 11352 |
| Sadye Parente | 55 |  |
| Loretta Beeman | 80 |  |
| Jessie Marcil | 55 |  |
| Arata Okamoto | 80 |  |
| Period 4 Training Costs |  |  |
| Period 4 Managerial Action Costs |  | 10 |
| Period 4 Unallocated Resource Costs |  | 15090 |
| Period 5 Training Costs |  |  |
| Period 5 Managerial Action Costs |  |  |
| Period 5 Unallocated Resource Costs |  | 5522 |
| Period 6 Training Costs |  |  |
| Period 6 Managerial Action Costs |  |  |
| Period 6 Unallocated Resource Costs |  | 3345 |
| Clayton Hergert | 54 |  |
| Loria Gervais | 54 |  |
| Period 7 Training Costs |  |  |
| Period 7 Managerial Action Costs |  |  |
| Period 7 Unallocated Resource Costs |  | 11380 |

## Schedule

| ID | WBS | Task | Duration | Start | Finish | Predecessors | Complete | Remaining | Baseline start | Baseline finish | Baseline duration | Total slack | Resources | Work | Actual work | Cost | Baseline cost | Actual cost |
| --- | --- | --- | --- | --- | --- | --- | --- | --- | --- | --- | --- | --- | --- | --- | --- | --- | --- | --- |
| 1 | 1 | **Site Preparation** | 21.94d | 2022-09-23 A | 2022-10-25 A |  | 100% |  | 2022-09-23 | 2022-10-21 | 20d? |  |  | 205h | 205h | 18,134.5 | 14,000 | 18,134.5 |
| 2 | 1.1 | Surveying | 8.88d | 2022-09-23 A | 2022-10-05 A |  | 100% |  | 2022-09-23 | 2022-10-05 | 8d? |  | Mingyu Zhùróng | 71h | 71h | 6,745 | 4,800 | 6,745 |
| 3 | 1.2 | Grading and clearing | 6d | 2022-10-12 A | 2022-10-20 A | 111, 8, 2 | 100% |  | 2022-10-07 | 2022-10-14 | 5d? |  | Ralph Blasingame | 48h | 48h | 3,744 | 3,400 | 3,744 |
| 4 | 1.3 | Roadway development | 4.88d | 2022-10-12 A | 2022-10-18 A | 2, 8, 111 | 100% |  | 2022-10-07 | 2022-10-13 | 4d? |  | Fujimaro Fujii | 39h | 39h | 3,627 | 2,400 | 3,627 |
| 5 | 1.4 | Apply first coat of asphalt | 1.75d | 2022-10-20 A | 2022-10-21 A | 3, 4 | 100% |  | 2022-10-14 | 2022-10-19 | 3d? |  | Ralph Blasingame; Fujimaro Fujii | 28h | 28h | 2,394 | 2,040 | 2,394 |
| 6 | 1.5 | Apply second cost of asphalt | 1.19d | 2022-10-21 A | 2022-10-25 A | 5 | 100% |  | 2022-10-19 | 2022-10-21 | 2d? |  | Fujimaro Fujii; Ralph Blasingame | 19h | 19h | 1,624.5 | 1,360 | 1,624.5 |
| 7 | 2 | **General Conditions** | 14d | 2022-09-23 A | 2022-10-13 |  | 95% | 0.76d | 2022-09-23 | 2022-10-10 | 11d? | 122.31d |  | 147h | 139h | 17,299 | 14,440 | 16,315 |
| 8 | 2.1 | Finalize plans and develop estimates | 10.88d | 2022-09-27 A | 2022-10-12 A |  | 100% |  | 2022-09-23 | 2022-10-07 | 10d? |  | Yoshito Mizugame | 87h | 87h | 10,701 | 10,000 | 10,701 |
| 9 | 2.2 | Sign contract and notice to proceed | 1d | 2022-10-12 A | 2022-10-13 A | 8, 111 | 100% |  | 2022-10-07 | 2022-10-10 | 1d? |  | Lukas Schmidt | 8h | 8h | 1,120 | 1,000 | 1,120 |
| 10 | 2.3 | Apply for all permits | 2.12d | 2022-09-23 A | 2022-09-27 A |  | 100% |  | 2022-09-23 | 2022-09-27 | 2d? |  | Yoshito Mizugame | 17h | 17h | 2,091 | 2,000 | 2,091 |
| 11 | 2.4 | Pizza Party | 1d | 2022-09-27 | 2022-09-28 | 10 |  |  |  |  |  | 133.19d | Yoshito Mizugame | 8h |  | 984 |  |  |
| 12 | 2.5 | Install temporary power service | 1.12d | 2022-09-27 A | 2022-09-28 A | 10 | 100% |  | 2022-09-27 | 2022-09-28 | 1d? |  | Darren Lobendahn | 9h | 9h | 693 | 720 | 693 |
| 13 | 2.6 | Install underground utilities | 2.25d | 2022-09-28 A | 2022-09-30 A | 12 | 100% |  | 2022-09-28 | 2022-09-29 | 1d? |  | Zihao Nángong | 18h | 18h | 1,710 | 720 | 1,710 |
| 14 | 3 | **Foundation** | 19.38d | 2022-10-25 A | 2022-11-21 A |  | 100% |  | 2022-10-21 | 2022-12-07 | 33d? |  |  | 310h | 310h | 26,505 | 22,760 | 26,505 |
| 15 | 3.1 | Excavate for foundation | 1.75d | 2022-10-25 A | 2022-10-26 A | 13, 9, 112, 6 | 100% |  | 2022-10-21 | 2022-10-26 | 3d? |  | Ralph Blasingame; Fujimaro Fujii | 28h | 28h | 2,394 | 2,040 | 2,394 |
| 16 | 3.2 | Form basement walls | 7.62d | 2022-10-26 A | 2022-11-07 A | 15 | 100% |  | 2022-10-26 | 2022-11-14 | 13d? |  | Fujimaro Fujii; Ralph Blasingame | 122h | 122h | 10,431 | 8,840 | 10,431 |
| 17 | 3.3 | Pour concrete for foundation | 7d | 2022-11-07 A | 2022-11-16 A | 16 | 100% |  | 2022-11-14 | 2022-11-30 | 12d? |  | Ralph Blasingame; Fujimaro Fujii | 112h | 112h | 9,576 | 8,160 | 9,576 |
| 18 | 3.4 | Waterproof/insulate basement walls | 1.19d | 2022-11-16 A | 2022-11-17 A | 17 | 100% |  | 2022-11-30 | 2022-12-02 | 2d? |  | Ralph Blasingame; Fujimaro Fujii | 19h | 19h | 1,624.5 | 1,360 | 1,624.5 |
| 19 | 3.5 | Perform foundation inspection | 0.62d | 2022-11-17 A | 2022-11-18 A | 18, 15 | 100% |  | 2022-12-02 | 2022-12-05 | 1d? |  | Ralph Blasingame; Fujimaro Fujii | 10h | 10h | 855 | 1,000 | 855 |
| 20 | 3.6 | Backfill foundation | 1.19d | 2022-11-18 A | 2022-11-21 A | 19 | 100% |  | 2022-12-05 | 2022-12-07 | 2d? |  | Ralph Blasingame; Fujimaro Fujii | 19h | 19h | 1,624.5 | 1,360 | 1,624.5 |
| 21 | 4 | **Framing** | 16.12d | 2022-11-21 A | 2022-12-15 A |  | 100% |  | 2022-12-07 | 2022-12-28 | 15d? |  |  | 145h | 145h | 7,975 | 6,600 | 7,975 |
| 22 | 4.1 | Lay 1st floor decking | 2.38d | 2022-11-21 A | 2022-11-23 A | 20, 113 | 100% |  | 2022-12-07 | 2022-12-09 | 2d? |  | Jessie Marcil | 19h | 19h | 1,045 | 800 | 1,045 |
| 23 | 4.2 | Frame 1st floor walls | 4.88d | 2022-11-23 A | 2022-11-30 A | 22 | 100% |  | 2022-12-09 | 2022-12-15 | 4d? |  | Sadye Parente | 39h | 39h | 2,145 | 1,600 | 2,145 |
| 24 | 4.3 | Frame 2nd floor decking | 2.38d | 2022-11-30 A | 2022-12-05 A | 23 | 100% |  | 2022-12-15 | 2022-12-19 | 2d? |  | Sadye Parente | 19h | 19h | 1,045 | 800 | 1,045 |
| 25 | 4.4 | Frame 2nd floor walls | 3.62d | 2022-12-05 A | 2022-12-08 A | 24 | 100% |  | 2022-12-19 | 2022-12-22 | 3d? |  | Jessie Marcil | 29h | 29h | 1,595 | 1,200 | 1,595 |
| 26 | 4.5 | Complete roof framing | 3.62d | 2022-12-08 A | 2022-12-14 A | 25 | 100% |  | 2022-12-22 | 2022-12-27 | 3d? |  | Jessie Marcil | 29h | 29h | 1,595 | 1,200 | 1,595 |
| 27 | 4.6 | Conduct framing inspection | 1.25d | 2022-12-14 A | 2022-12-15 A | 26 | 100% |  | 2022-12-27 | 2022-12-28 | 1d? |  | Jessie Marcil | 10h | 10h | 550 | 1,000 | 550 |

| ID | WBS | Task | Duration | Start | Finish | Predecessors | Complete | Remaining | Baseline start | Baseline finish | Baseline duration | Total slack | Resources | Work | Actual work | Cost | Baseline cost | Actual cost |
| --- | --- | --- | --- | --- | --- | --- | --- | --- | --- | --- | --- | --- | --- | --- | --- | --- | --- | --- |
| 28 | 5 | **Dry In** | 23.62d | 2022-12-15 A | 2023-01-18 A |  | 100% |  | 2022-12-28 | 2023-01-26 | 21d? |  |  | 181h | 181h | 9,955 | 7,600 | 9,955 |
| 29 | 5.1 | Install 1st floor sheathing | 1.75d | 2022-12-15 A | 2022-12-19 A | 27, 114 | 100% |  | 2022-12-28 | 2023-01-02 | 3d? |  | Jessie Marcil; Sadye Parente | 28h | 28h | 1,540 | 1,200 | 1,540 |
| 30 | 5.2 | Install 2nd floor sheathing | 1.75d | 2022-12-21 A | 2022-12-22 A | 29 | 100% |  | 2023-01-02 | 2023-01-05 | 3d? |  | Jessie Marcil; Sadye Parente | 28h | 28h | 1,540 | 1,200 | 1,540 |
| 31 | 5.3 | Install roof decking | 1.75d | 2022-12-19 A | 2022-12-21 A | 26, 114 | 100% |  | 2022-12-28 | 2023-01-02 | 3d? |  | Jessie Marcil; Sadye Parente | 28h | 28h | 1,540 | 1,200 | 1,540 |
| 32 | 5.4 | Install felt, flashing and shingles | 3.62d | 2023-01-02 A | 2023-01-05 A | 115, 102, 105, 31 | 100% |  | 2023-01-12 | 2023-01-17 | 3d? |  | Sadye Parente | 29h | 29h | 1,595 | 1,200 | 1,595 |
| 33 | 5.5 | Hang 1st floor exterior doors | 1.25d | 2023-01-05 A | 2023-01-06 A | 32 | 100% |  | 2023-01-17 | 2023-01-18 | 1d? |  | Jessie Marcil | 10h | 10h | 550 | 400 | 550 |
| 34 | 5.6 | Install 1st floor windows | 3.62d | 2023-01-06 A | 2023-01-12 A | 33 | 100% |  | 2023-01-18 | 2023-01-23 | 3d? |  | Sadye Parente | 29h | 29h | 1,595 | 1,200 | 1,595 |
| 35 | 5.7 | Install 2nd floor windows | 3.62d | 2023-01-12 A | 2023-01-18 A | 34 | 100% |  | 2023-01-23 | 2023-01-26 | 3d? |  | Jessie Marcil | 29h | 29h | 1,595 | 1,200 | 1,595 |
| 36 | 6 | **Exterior Finishes** | 24.25d? | 2023-01-18 A | 2023-02-21 |  | 77% | 5.46d? | 2023-01-30 | 2023-03-10 | 29d? | 5d |  | 165h | 165h | 9,075 | 11,400 | 9,075 |
| 37 | 6.1 | Complete exterior brickwork | 10.31d | 2023-01-18 A | 2023-02-01 A | 35, 104, 116 | 100% |  | 2023-01-30 | 2023-02-21 | 16d? |  | Sadye Parente; Jessie Marcil | 165h | 165h | 9,075 | 9,600 | 9,075 |
| 38 | 6.2 | Complete exterior siding | 3d? | 2023-02-16 | 2023-02-21 | 118, 53, 37 |  |  | 2023-03-07 | 2023-03-10 | 3d? | 5d |  |  |  |  | 1,800 |  |
| 39 | 7 | **Utility Rough-Ins and Complete Concrete** | 13.25d? | 2023-01-18 A | 2023-02-06 |  | 64% | 4.82d? | 2023-01-30 | 2023-02-23 | 18d? | 0d |  | 28h | 28h | 2,156 | 2,200 | 2,156 |
| 40 | 7.1 | Place wall insulation - 1st floor | 1.75d | 2023-01-18 A | 2023-01-19 A | 35, 30, 29, 107, 105, 104, 109, 116 | 100% |  | 2023-01-30 | 2023-01-31 | 1d? |  | Darren Lobendahn | 14h | 14h | 1,078 | 400 | 1,078 |
| 41 | 7.2 | Place wall insulation - 2nd floor | 1.75d | 2023-01-19 A | 2023-01-23 A | 40 | 100% |  | 2023-01-31 | 2023-02-01 | 1d? |  | Darren Lobendahn | 14h | 14h | 1,078 | 400 | 1,078 |
| 42 | 7.3 | Place ceiling insulation - 2nd floor | 1d? | 2023-02-02 | 2023-02-03 | 41, 117 |  |  | 2023-02-21 | 2023-02-22 | 1d? | 0d |  |  |  |  | 400 |  |
| 43 | 7.4 | Conduct insulation inspection | 1d? | 2023-02-03 | 2023-02-06 | 42, 37 |  |  | 2023-02-22 | 2023-02-23 | 1d? | 0d |  |  |  |  | 1,000 |  |
| 44 | 8 | **Drywall and Paint** | 19.5d? | 2023-01-19 A | 2023-02-16 |  | 54% | 8.91d? | 2023-01-31 | 2023-03-07 | 25d? | 0d |  | 76h | 76h | 4,104 | 7,840 | 4,104 |
| 45 | 8.1 | Install drywall - 1st floor walls | 2.38d | 2023-01-19 A | 2023-01-24 A | 40 | 100% |  | 2023-01-31 | 2023-02-02 | 2d? |  | Loria Gervais | 19h | 19h | 1,026 | 800 | 1,026 |
| 46 | 8.2 | Install drywall - 1st floor overhead | 2.38d | 2023-01-24 A | 2023-01-26 A | 45 | 100% |  | 2023-02-02 | 2023-02-06 | 2d? |  | Clayton Hergert | 19h | 19h | 1,026 | 800 | 1,026 |
| 47 | 8.3 | Install drywall - 2nd floor walls | 2.38d | 2023-01-26 A | 2023-01-31 A | 46, 41 | 100% |  | 2023-02-06 | 2023-02-08 | 2d? |  | Loria Gervais | 19h | 19h | 1,026 | 800 | 1,026 |
| 48 | 8.4 | Install drywall - 2nd floor overhead | 2.38d | 2023-01-31 A | 2023-02-02 A | 47 | 100% |  | 2023-02-08 | 2023-02-10 | 2d? |  | Clayton Hergert | 19h | 19h | 1,026 | 800 | 1,026 |
| 49 | 8.5 | Tape and sand 1st floor drywall | 1d? | 2023-02-06 | 2023-02-07 | 46, 43 |  |  | 2023-02-23 | 2023-02-24 | 1d? | 0d |  |  |  |  | 400 |  |
| 50 | 8.6 | Tape and sand 2nd floor drywall | 1d? | 2023-02-07 | 2023-02-08 | 48, 49 |  |  | 2023-02-24 | 2023-02-27 | 1d? | 0d |  |  |  |  | 400 |  |
| 51 | 8.7 | Paint all - 1st floor | 1d? | 2023-02-08 | 2023-02-09 | 50 |  |  | 2023-02-27 | 2023-02-28 | 1d? | 0d |  |  |  |  | 640 |  |
| 52 | 8.8 | Paint all - 2nd floor | 1d? | 2023-02-09 | 2023-02-10 | 51 |  |  | 2023-02-28 | 2023-03-01 | 1d? | 0d |  |  |  |  | 640 |  |
| 53 | 8.9 | Paint exterior trim and siding | 4d? | 2023-02-10 | 2023-02-16 | 52 |  |  | 2023-03-01 | 2023-03-07 | 4d? | 0d |  |  |  |  | 2,560 |  |

| ID | WBS | Task | Duration | Start | Finish | Predecessors | Baseline start | Baseline finish | Baseline duration | Total slack | Free slack | Baseline cost |
| --- | --- | --- | --- | --- | --- | --- | --- | --- | --- | --- | --- | --- |
| 54 | 9 | **Cabinets** | 6d? | 2023-02-16 | 2023-02-24 |  | 2023-03-07 | 2023-03-15 | 6d? | 0d |  | 3,600 |
| 55 | 9.1 | Install 1st floor - kitchen cabinets | 2d? | 2023-02-16 | 2023-02-20 | 53, 51, 118 | 2023-03-07 | 2023-03-09 | 2d? | 0d |  | 1,200 |
| 56 | 9.2 | Install 1st floor - master bath cabinets | 1d? | 2023-02-20 | 2023-02-21 | 55 | 2023-03-09 | 2023-03-10 | 1d? | 0d |  | 600 |
| 57 | 9.3 | Install 2nd floor - hall bath cabinets | 1d? | 2023-02-21 | 2023-02-22 | 56 | 2023-03-10 | 2023-03-13 | 1d? | 1d | 0d | 600 |
| 58 | 9.4 | Install chair rails and crown molding | 2d? | 2023-02-22 | 2023-02-24 | 57 | 2023-03-13 | 2023-03-15 | 2d? | 2d |  | 1,200 |
| 59 | 10 | **Finish Plumbing** | 6d? | 2023-02-20 | 2023-02-28 |  | 2023-03-09 | 2023-03-17 | 6d? | 0d |  | 3,840 |
| 60 | 10.1 | Complete 1st floor - kitchen plumbing | 1d? | 2023-02-20 | 2023-02-21 | 55, 103 | 2023-03-09 | 2023-03-10 | 1d? | 0d |  | 640 |
| 61 | 10.2 | Complete 1st floor - master bath plumbing | 2d? | 2023-02-21 | 2023-02-23 | 56, 60 | 2023-03-10 | 2023-03-14 | 2d? | 0d |  | 1,280 |
| 62 | 10.3 | Complete 2nd floor - hall bath plumbing | 2d? | 2023-02-23 | 2023-02-27 | 61, 57 | 2023-03-14 | 2023-03-16 | 2d? | 0d |  | 1,280 |
| 63 | 10.4 | Conduct finish plumbing inspection | 1d? | 2023-02-27 | 2023-02-28 | 62 | 2023-03-16 | 2023-03-17 | 1d? | 0d |  | 640 |
| 64 | 11 | **Finish Electrical** | 3d? | 2023-02-28 | 2023-03-03 |  | 2023-03-17 | 2023-03-22 | 3d? | 0d |  | 3,880 |
| 65 | 11.1 | Complete 1st floor circuits to standard | 1d? | 2023-02-28 | 2023-03-01 | 63, 106, 119 | 2023-03-17 | 2023-03-20 | 1d? | 2d | 0d | 720 |
| 66 | 11.2 | Complete 2nd floor circuits to standard | 1d? | 2023-03-01 | 2023-03-02 | 65 | 2023-03-20 | 2023-03-21 | 1d? | 2d | 0d | 720 |
| 67 | 11.3 | Conduct finish electrical inspection | 1d? | 2023-03-02 | 2023-03-03 | 66 | 2023-03-21 | 2023-03-22 | 1d? | 2d |  | 1,000 |
| 68 | 11.4 | Complete communications wiring | 2d? | 2023-02-28 | 2023-03-02 | 63, 119 | 2023-03-17 | 2023-03-21 | 2d? | 0d |  | 1,440 |
| 69 | 12 | **Finish HVAC** | 3d? | 2023-03-02 | 2023-03-07 |  | 2023-03-21 | 2023-03-24 | 3d? | 0d |  | 2,280 |
| 70 | 12.1 | Complete 1st floor - zone 1 HVAC | 1d? | 2023-03-02 | 2023-03-03 | 108, 68 | 2023-03-21 | 2023-03-22 | 1d? | 0d |  | 640 |
| 71 | 12.2 | Complete 2nd floor - zone 2 HVAC | 1d? | 2023-03-03 | 2023-03-06 | 70 | 2023-03-22 | 2023-03-23 | 1d? | 0d |  | 640 |
| 72 | 12.3 | Conduct HVAC inspection | 1d? | 2023-03-06 | 2023-03-07 | 71 | 2023-03-23 | 2023-03-24 | 1d? | 0d |  | 1,000 |
| 73 | 13 | **Carpet, Tile and Appliances** | 8d? | 2023-03-07 | 2023-03-17 |  | 2023-03-24 | 2023-04-05 | 8d? | 0d |  | 4,000 |
| 74 | 13.1 | Tile entry, kitchen and baths | 3d? | 2023-03-07 | 2023-03-10 | 67, 120, 72 | 2023-03-24 | 2023-03-29 | 3d? | 0d |  | 1,800 |
| 75 | 13.2 | Carpet 1st floor | 2d? | 2023-03-10 | 2023-03-14 | 74 | 2023-03-29 | 2023-03-31 | 2d? | 0d |  | 800 |
| 76 | 13.3 | Carpet 2nd floor | 2d? | 2023-03-14 | 2023-03-16 | 75 | 2023-03-31 | 2023-04-04 | 2d? | 0d |  | 800 |
| 77 | 13.4 | Install appliances | 1d? | 2023-03-16 | 2023-03-17 | 76 | 2023-04-04 | 2023-04-05 | 1d? | 0d |  | 600 |

| ID | WBS | Task | Duration | Start | Finish | Predecessors | Complete | Remaining | Baseline start | Baseline finish | Baseline duration | Total slack | Resources | Work | Actual work | Cost | Baseline cost | Actual cost |
| --- | --- | --- | --- | --- | --- | --- | --- | --- | --- | --- | --- | --- | --- | --- | --- | --- | --- | --- |
| 78 | 14 | **Landscaping and Grounds Work** | 26d? | 2023-02-16 | 2023-03-24 |  |  |  | 2023-03-07 | 2023-04-12 | 26d? | 0d |  |  |  |  | 3,360 |  |
| 79 | 14.1 | Pour concrete driveway and sidewalk | 2d? | 2023-02-16 | 2023-02-20 | 53, 118 |  |  | 2023-03-07 | 2023-03-09 | 2d? | 6d |  |  |  |  | 1,360 |  |
| 80 | 14.2 | Install backyard fence | 2d? | 2023-03-17 | 2023-03-21 | 77, 79 |  |  | 2023-04-05 | 2023-04-07 | 2d? | 0d |  |  |  |  | 800 |  |
| 81 | 14.3 | Sod and complete plantings - front yard | 2d? | 2023-03-21 | 2023-03-23 | 80 |  |  | 2023-04-07 | 2023-04-11 | 2d? | 0d |  |  |  |  | 800 |  |
| 82 | 14.4 | Sod and complete plantings - back yard | 1d? | 2023-03-23 | 2023-03-24 | 81, 121 |  |  | 2023-04-11 | 2023-04-12 | 1d? | 0d |  |  |  |  | 400 |  |
| 83 | 15 | **Final Acceptance** | 8d? | 2023-03-24 | 2023-04-05 |  |  |  | 2023-04-12 | 2023-04-24 | 8d? | 0d |  |  |  |  | 7,400 |  |
| 84 | 15.1 | Complete final inspection for certification | 1d? | 2023-03-24 | 2023-03-27 | 38, 72, 104, 43, 67, 63, 58, 82 |  |  | 2023-04-12 | 2023-04-13 | 1d? | 0d |  |  |  |  | 1,000 |  |
| 85 | 15.2 | Cleanup for occupancy | 1d? | 2023-03-27 | 2023-03-28 | 84, 77 |  |  | 2023-04-13 | 2023-04-14 | 1d? | 0d |  |  |  |  | 400 |  |
| 86 | 15.3 | Perform final walk-through inspection | 1d? | 2023-03-28 | 2023-03-29 | 85 |  |  | 2023-04-14 | 2023-04-17 | 1d? | 0d |  |  |  |  | 1,000 |  |
| 87 | 15.4 | Complete punch list items | 5d? | 2023-03-29 | 2023-04-05 | 86 |  |  | 2023-04-17 | 2023-04-24 | 5d? | 0d |  |  |  |  | 5,000 |  |
| 88 | 16 | **Project Management** | 134.31d? | 2022-09-23 A | 2023-04-03 |  | 60% | 53.77d? | 2022-09-23 | 2023-04-20 | 149d? | 2d |  | 662h | 662h | 87,044.5 | 110,000 | 87,044.5 |
| 89 | 16.1 | Project Management Period 1 | 8d | 2022-09-23 A | 2022-10-05 A |  | 100% |  | 2022-09-23 | 2022-10-04 | 7.5d? |  | Lukas Schmidt | 64h | 64h | 8,960 | 7,500 | 8,960 |
| 90 | 16.2 | Project Management Period 2 | 8.12d | 2022-10-12 A | 2022-10-24 A | 89, 111 | 100% |  | 2022-10-07 | 2022-10-18 | 7.5d? |  | Yoshito Mizugame | 65h | 65h | 7,995 | 7,500 | 7,995 |
| 91 | 16.3 | Project Management Period 3 | 12.88d | 2022-10-25 A | 2022-11-10 A | 112, 90 | 100% |  | 2022-10-21 | 2022-11-24 | 24d? |  | Lukas Schmidt; Yoshito Mizugame | 206h | 206h | 27,089 | 24,000 | 27,089 |
| 92 | 16.4 | Project Management Period 4 | 5.94d | 2022-11-21 A | 2022-11-29 A | 91, 113 | 100% |  | 2022-12-07 | 2022-12-22 | 11d? |  | Lukas Schmidt; Yoshito Mizugame | 95h | 95h | 12,492.5 | 11,000 | 12,492.5 |
| 93 | 16.5 | Project Management Period 5 | 4.31d | 2022-12-15 A | 2022-12-21 A | 114, 92 | 100% |  | 2022-12-28 | 2023-01-09 | 8d? |  | Lukas Schmidt; Yoshito Mizugame | 69h | 69h | 9,073.5 | 8,000 | 9,073.5 |
| 94 | 16.6 | Project Management Period 6 | 3.75d | 2023-01-02 A | 2023-01-05 A | 93, 115 | 100% |  | 2023-01-12 | 2023-01-23 | 7d? |  | Yoshito Mizugame; Lukas Schmidt | 60h | 60h | 7,890 | 7,000 | 7,890 |
| 95 | 16.7 | Project Management Period 7 | 6.44d | 2023-01-18 A | 2023-01-26 A | 116, 94 | 100% |  | 2023-01-30 | 2023-02-15 | 12d? |  | Yoshito Mizugame; Lukas Schmidt | 103h | 103h | 13,544.5 | 12,000 | 13,544.5 |
| 96 | 16.8 | Project Management Period 8 | 6d? | 2023-01-26 | 2023-02-03 | 95 |  |  | 2023-02-15 | 2023-02-23 | 6d? | 8.81d |  |  |  |  | 6,000 |  |
| 97 | 16.9 | Project Management Period 9 | 6d? | 2023-02-16 | 2023-02-24 | 96, 118 |  |  | 2023-03-07 | 2023-03-15 | 6d? | 2d |  |  |  |  | 6,000 |  |
| 98 | 16.10 | Project Management Period 10 | 5d? | 2023-02-28 | 2023-03-07 | 119, 97 |  |  | 2023-03-17 | 2023-03-24 | 5d? | 0d |  |  |  |  | 5,000 |  |
| 99 | 16.11 | Project Management Period 11 | 9d? | 2023-03-07 | 2023-03-20 | 98, 120 |  |  | 2023-03-24 | 2023-04-06 | 9d? | 3d |  |  |  |  | 9,000 |  |
| 100 | 16.12 | Project Management Period 12 | 7d? | 2023-03-23 | 2023-04-03 | 121, 99 |  |  | 2023-04-11 | 2023-04-20 | 7d? | 2d |  |  |  |  | 7,000 |  |
| 101 | 17 | **Insulation** | 15.5d | 2022-12-21 A | 2023-01-11 A |  | 100% |  | 2023-01-02 | 2023-01-30 | 20d? |  |  | 277h | 277h | 23,168 | 20,640 | 23,168 |
| 102 | 17.1 | Rough-in plumbing | 5.62d | 2022-12-22 A | 2022-12-30 A | 31, 30 | 100% |  | 2023-01-05 | 2023-01-12 | 5d? |  | Zihao Nángong | 45h | 45h | 4,275 | 3,200 | 4,275 |
| 103 | 17.2 | Conduct rough-in plumbing inspection | 1.12d | 2023-01-02 A | 2023-01-03 A | 115, 102 | 100% |  | 2023-01-12 | 2023-01-13 | 1d? |  | Zihao Nángong | 9h | 9h | 855 | 1,000 | 855 |
| 104 | 17.3 | Pour concrete for basement floor | 6.38d | 2023-01-03 A | 2023-01-11 A | 103 | 100% |  | 2023-01-13 | 2023-01-30 | 11d? |  | Fujimaro Fujii; Ralph Blasingame | 102h | 102h | 8,721 | 7,480 | 8,721 |
| 105 | 17.4 | Rough-in electrical | 5.75d | 2022-12-23 A | 2023-01-02 A | 30, 31 | 100% |  | 2023-01-05 | 2023-01-12 | 5d? |  | Darren Lobendahn | 46h | 46h | 3,542 | 3,600 | 3,542 |
| 106 | 17.5 | Conduct rough-in electrical inspection | 1.12d | 2023-01-02 A | 2023-01-03 A | 105, 115 | 100% |  | 2023-01-12 | 2023-01-13 | 1d? |  | Darren Lobendahn | 9h | 9h | 693 | 1,000 | 693 |
| 107 | 17.6 | Rough-in HVAC | 4.5d | 2023-01-03 A | 2023-01-09 A | 106 | 100% |  | 2023-01-13 | 2023-01-18 | 3d? |  | Darren Lobendahn | 36h | 36h | 2,772 | 1,920 | 2,772 |
| 108 | 17.7 | Conduct rough-in HVAC inspection | 1.5d | 2023-01-09 A | 2023-01-11 A | 107 | 100% |  | 2023-01-18 | 2023-01-19 | 1d? |  | Darren Lobendahn | 12h | 12h | 924 | 1,000 | 924 |
| 109 | 17.8 | Rough-in communication - phone, cable | 2.25d | 2022-12-21 A | 2022-12-23 A | 31 | 100% |  | 2023-01-02 | 2023-01-04 | 2d? |  | Darren Lobendahn | 18h | 18h | 1,386 | 1,440 | 1,386 |

| ID | WBS | Task | Type | Duration | Start | Finish | Predecessors | Complete | Remaining | Baseline start | Baseline finish | Baseline duration | Total slack | Resources | Cost | Baseline cost | Actual cost |
| --- | --- | --- | --- | --- | --- | --- | --- | --- | --- | --- | --- | --- | --- | --- | --- | --- | --- |
| 110 | 18 | **Milestones** |  | 123.31d? | 2022-10-12 A | 2023-04-05 |  |  | 123.31d? | 2022-10-07 | 2023-04-24 | 141d? | 0d |  | 52,856 | 25,000 | 52,856 |
| 111 | 18.1 | Milestone 1 | milestone | 0d | 2022-10-12 A | 2022-10-12 A | 8, 89, 2, 13 | 100% |  | 2022-10-07 | 2022-10-07 | 0d? |  | Period 1 Training Costs; Period 1 Managerial Action Costs; Period 1 Unallocated Resource Costs | 1,037 | 3,125 | 1,037 |
| 112 | 18.2 | Milestone 2 | milestone | 0d | 2022-10-25 A | 2022-10-25 A | 9, 6, 90 | 100% |  | 2022-10-21 | 2022-10-21 | 0d? |  | Period 2 Training Costs; Period 2 Managerial Action Costs; Period 2 Unallocated Resource Costs | 5,120 | 3,125 | 5,120 |
| 113 | 18.3 | Milestone 3 | milestone | 0d | 2022-11-21 A | 2022-11-21 A | 91, 20 | 100% |  | 2022-12-07 | 2022-12-07 | 0d? |  | Period 3 Training Costs; Period 3 Managerial Action Costs; Period 3 Unallocated Resource Costs | 11,352 | 3,125 | 11,352 |
| 114 | 18.4 | Milestone 4 | milestone | 0d | 2022-12-15 A | 2022-12-15 A | 27, 92 | 100% |  | 2022-12-28 | 2022-12-28 | 0d? |  | Period 4 Training Costs; Period 4 Managerial Action Costs; Period 4 Unallocated Resource Costs | 15,100 | 3,125 | 15,100 |
| 115 | 18.5 | Milestone 5 | milestone | 0d | 2023-01-02 A | 2023-01-02 A | 93, 109, 102, 105 | 100% |  | 2023-01-12 | 2023-01-12 | 0d? |  | Period 5 Training Costs; Period 5 Managerial Action Costs; Period 5 Unallocated Resource Costs | 5,522 | 3,125 | 5,522 |
| 116 | 18.6 | Milestone 6 | milestone | 0d | 2023-01-18 A | 2023-01-18 A | 108, 104, 94, 35 | 100% |  | 2023-01-30 | 2023-01-30 | 0d? |  | Period 6 Training Costs; Period 6 Managerial Action Costs; Period 6 Unallocated Resource Costs | 3,345 | 3,125 | 3,345 |
| 117 | 18.7 | Milestone 7 | milestone | 0d | 2023-02-02 A | 2023-02-02 A | 37, 95, 48 | 100% |  | 2023-02-21 | 2023-02-21 | 0d? |  | Period 7 Training Costs; Period 7 Managerial Action Costs; Period 7 Unallocated Resource Costs | 11,380 | 3,125 | 11,380 |
| 118 | 18.8 | Milestone 8 | milestone | 0d? | 2023-02-16 | 2023-02-16 | 96, 53 |  |  | 2023-03-07 | 2023-03-07 | 0d? | 0d |  |  | 3,125 |  |
| 119 | 18.9 | Milestone 9 | milestone | 0d? | 2023-02-28 | 2023-02-28 | 58, 79, 63, 97, 38 |  |  | 2023-03-17 | 2023-03-17 | 0d? | 0d |  |  |  |  |
| 120 | 18.10 | Milestone 10 | milestone | 0d? | 2023-03-07 | 2023-03-07 | 72, 98, 67 |  |  | 2023-03-24 | 2023-03-24 | 0d? | 0d |  |  |  |  |
| 121 | 18.11 | Milestone 11 | milestone | 0d? | 2023-03-23 | 2023-03-23 | 81, 99 |  |  | 2023-04-11 | 2023-04-11 | 0d? | 0d |  |  |  |  |
| 122 | 18.12 | Milestone 12 | milestone | 0d? | 2023-04-05 | 2023-04-05 | 100, 87 |  |  | 2023-04-24 | 2023-04-24 | 0d? | 0d |  |  |  |  |
